# Your Name

How a schedule from MS Project changed from version to version. A marks actual dates.

## Version 1 (data date 2014-10-10, saved 2013-03-11, file NewAV-5.mpp)

Note of the change: addingCollegeCourses

| ID | WBS | Task | Duration | Start | Finish | Predecessors | Complete | Total float |
| --- | --- | --- | --- | --- | --- | --- | --- | --- |
| 1 | A | **Analysis** | 13d | 2014-08-04 A | 2014-08-20 A |  | 100% |  |
| 2 |  | Detail current status | 3d | 2014-08-04 A | 2014-08-06 A |  | 100% |  |
| 3 |  | Conduct needs analysis | 2w | 2014-08-07 A | 2014-08-20 A | 2 | 100% |  |
| 4 |  | Analysis completed | 0d | 2014-08-20 A | 2014-08-20 A | 3 | 100% |  |
| 5 | B | **Design** | 12.7d | 2014-08-15 A | 2014-09-02 A |  | 100% |  |
| 6 |  | Build Request for Proposal | 4d | 2014-08-15 A | 2014-08-22 A | 4 | 100% |  |
| 7 |  | Gather vendor bids | 2w | 2014-08-15 A | 2014-08-28 A | 6 | 100% |  |
| 8 |  | Choose vendors | 3d | 2014-08-20 A | 2014-09-02 A | 7 | 100% |  |
| 9 |  | Sign contracts | 0d | 2014-09-02 A | 2014-09-02 A | 8 | 100% |  |
| 10 | C | **Installation** | 23.3d | 2014-09-02 A | 2014-10-03 A |  | 100% |  |
| 11 |  | Install cabling | 1d | 2014-09-02 A | 2014-09-03 A | 9 | 100% |  |
| 12 |  | Install hardware | 6.25d | 2014-09-03 A | 2014-09-26 A | 11 | 100% |  |
| 13 |  | Install software | 5d | 2014-09-29 A | 2014-10-03 A | 12 | 100% |  |
| 14 |  | Installation completed | 0d | 2014-10-03 A | 2014-10-03 A | 13 | 100% |  |
| 15 | L | **Security** | 6d | 2014-10-03 A | 2014-10-13 | 10 | 83% | 16d |
| 16 |  | Create user IDs and passwords | 2d | 2014-10-03 A | 2014-10-07 A | 14 | 100% |  |
| 17 |  | Create access hierarchy | 3d | 2014-10-08 A | 2014-10-13 | 16 | 67% | 16d |
| 18 |  | Create touch panel images | 1d | 2014-10-08 A | 2014-10-08 | 17SS | 99% | 19d |
| 19 |  | Security completed | 0d | 2014-10-13 | 2014-10-13 | 16, 17, 18 |  | 12d |
| 20 | E | **Testing** | 10d | 2014-10-06 A | 2014-10-17 | 10 | 40% | 0d |
| 21 |  | Test hardware | 1d | 2014-10-06 A | 2014-10-06 A |  | 100% |  |
| 22 |  | Test software | 4d | 2014-10-07 A | 2014-10-17 | 21 | 50% | 0d |
| 23 |  | Test security | 2.5d | 2014-10-07 | 2014-10-13 | 22SS |  | 4d |
| 24 |  | Testing completed | 0d | 2014-10-17 | 2014-10-17 | 21, 22, 23 |  | 0d |
| 25 | D | **Training** | 12d | 2014-10-20 | 2014-11-04 | 20 |  | 0d |
| 26 |  | Train management | 6d | 2014-10-20 | 2014-10-27 | 24 |  | 6d |
| 27 |  | Train users | 6d | 2014-10-28 | 2014-11-04 | 24 |  | 0d |
| 28 |  | Training completed | 0d | 2014-11-04 | 2014-11-04 | 27 |  | 0d |

## Version 2 (data date 2014-10-10, saved 2013-03-12, file NewAVFin-5.mpp)

Note of the change: addingCollegeCourses

Last finish 2014-11-04 → 2014-11-20 (+16d). Complete tasks 13 → 4.

Changed:

| ID | Task | Start | Finish | Duration | Complete | Total float | Predecessors | Other |
| --- | --- | --- | --- | --- | --- | --- | --- | --- |
| 5 | **Design** | 2014-08-15 A → 2014-08-21 A (+6d) | 2014-09-02 A → 2014-10-10 (+38d) | 12.7d → 36.25d | 100% → 83% | none → 3.25d |  |  |
| 6 | Build Request for Proposal | 2014-08-15 A → 2014-08-21 A (+6d) | 2014-08-22 A → 2014-09-30 A (+39d) | 4d → 29d |  |  |  |  |
| 7 | Gather vendor bids | 2014-08-15 A → 2014-08-27 A (+12d) | 2014-08-28 A → 2014-10-07 (+40d) |  | 100% → 50% | none → 3.25d |  |  |
| 8 | Choose vendors | 2014-08-20 A → 2014-09-10 A (+21d) | 2014-09-02 A → 2014-10-10 (+38d) |  | 100% → 25% | none → 3.25d |  |  |
| 9 | Sign contracts | 2014-09-02 A → 2014-10-10 (+38d) | 2014-09-02 A → 2014-10-10 (+38d) |  | 100% → 0% | none → 3.25d |  |  |
| 10 | **Installation** | 2014-09-02 A → 2014-10-10 A (+38d) | 2014-10-03 A → 2014-10-27 (+24d) | 23.3d → 11d | 100% → 30% | none → 0d |  |  |
| 11 | Install cabling | 2014-09-02 A → 2014-10-10 A (+38d) | 2014-09-03 A → 2014-10-13 (+40d) |  | 100% → 75% | none → 2.5d |  |  |
| 12 | Install hardware | 2014-09-03 A → 2014-10-13 A (+40d) | 2014-09-26 A → 2014-10-20 (+24d) | 6.25d → 5d | 100% → 50% | none → 0d |  |  |
| 13 | Install software | 2014-09-29 A → 2014-10-20 (+21d) | 2014-10-03 A → 2014-10-27 (+24d) |  | 100% → 0% | none → 0d |  |  |
| 14 | Installation completed | 2014-10-03 A → 2014-10-27 (+24d) | 2014-10-03 A → 2014-10-27 (+24d) |  | 100% → 0% | none → 0d |  |  |
| 15 | **Security** | 2014-10-03 A → 2014-10-27 (+24d) | 2014-10-13 → 2014-11-06 (+24d) | 6d → 8d | 83% → 0% | 16d → 3.75d |  |  |
| 16 | Create user IDs and passwords | 2014-10-03 A → 2014-10-27 (+24d) | 2014-10-07 A → 2014-10-29 (+22d) |  | 100% → 0% | none → 10d |  |  |
| 17 | Create access hierarchy | 2014-10-08 A → 2014-10-29 (+21d) | 2014-10-13 → 2014-11-04 (+22d) | 3d → 4d | 67% → 0% | 16d → 10d |  | resources General Labor [200%]; Alex Kolar → General Labor; Alex Kolar |
| 18 | Create touch panel images | 2014-10-08 A → 2014-11-04 (+27d) | 2014-10-08 → 2014-11-06 (+29d) | 1d → 2d | 99% → 0% | 19d → 10d | 17SS → 17 | resources General Labor [200%]; Alex Kolar → General Labor; Alex Kolar |
| 19 | Security completed | 2014-10-13 → 2014-11-06 (+24d) | 2014-10-13 → 2014-11-06 (+24d) |  |  | 12d → 3.75d |  |  |
| 20 | **Testing** | 2014-10-06 A → 2014-10-27 (+21d) | 2014-10-17 → 2014-11-04 (+18d) | 10d → 6d | 40% → 0% |  |  |  |
| 21 | Test hardware | 2014-10-06 A → 2014-10-27 (+21d) | 2014-10-06 A → 2014-10-28 (+22d) |  | 100% → 0% | none → 0d |  |  |
| 22 | Test software | 2014-10-07 A → 2014-10-28 (+21d) | 2014-10-17 → 2014-11-03 (+17d) |  | 50% → 0% |  |  |  |
| 23 | Test security | 2014-10-07 → 2014-10-28 (+21d) | 2014-10-13 → 2014-11-04 (+22d) |  |  | 4d → 0d |  |  |
| 24 | Testing completed | 2014-10-17 → 2014-11-04 (+18d) | 2014-10-17 → 2014-11-04 (+18d) |  |  |  |  |  |
| 25 | **Training** | 2014-10-20 → 2014-11-04 (+15d) | 2014-11-04 → 2014-11-20 (+16d) |  |  |  |  |  |
| 26 | Train management | 2014-10-20 → 2014-11-04 (+15d) | 2014-10-27 → 2014-11-12 (+16d) |  |  |  |  |  |
| 27 | Train users | 2014-10-28 → 2014-11-12 (+15d) | 2014-11-04 → 2014-11-20 (+16d) |  |  |  |  |  |
| 28 | Training completed | 2014-11-04 → 2014-11-20 (+16d) | 2014-11-04 → 2014-11-20 (+16d) |  |  |  |  |  |
